# Scrum - Cronograma de Proyecto

How a schedule from MS Project changed from version to version. A marks actual dates.

## Version 1 (saved 2025-10-01)

Note of the change: docs: actualización de documentos (#1)

| ID | WBS | Task | Duration | Start | Finish | Predecessors | Total float |
| --- | --- | --- | --- | --- | --- | --- | --- |
| 1 | 1 | **REVISOR AUTOMÁTICO DE ESCRITURA ACADÉMICA** | 61.5d | 2025-09-08 09:00 | 2025-12-02 13:00 |  | 0d |
| 2 | 1.1 | **1.0 INICIO** | 3.5d | 2025-09-08 09:00 | 2025-09-11 13:00 |  | 0d |
| 3 |  | Redactar declaración de visión del producto | 1h | 2025-09-08 09:00 | 2025-09-08 10:00 |  | 0d |
| 4 |  | Identificar roles clave | 3h | 2025-09-08 10:00 | 2025-09-08 13:00 | 3 | 0d |
| 5 |  | Registro de interesados | 2h | 2025-09-08 15:00 | 2025-09-08 17:00 | 4 | 0d |
| 6 |  | Crear acta de constitución | 1d | 2025-09-08 17:00 | 2025-09-09 17:00 | 5 | 0d |
| 7 |  | Formar equipo Scrum | 2h | 2025-09-09 17:00 | 2025-09-09 19:00 | 6 | 0d |
| 8 |  | Desarrollar Epicas | 3h | 2025-09-10 09:00 | 2025-09-10 12:00 | 7 | 0d |
| 9 |  | Crear el backlog priorizado del producto | 5h | 2025-09-10 12:00 | 2025-09-10 19:00 | 8 | 0d |
| 10 |  | Crear la planificación de lanzamiento | 4h | 2025-09-11 09:00 | 2025-09-11 13:00 | 9 | 0d |
| 11 | 1.2 | **2.0 PLANIFICACION Y ESTIMACION** | 9d | 2025-09-11 15:00 | 2025-09-24 13:00 |  | 0d |
| 12 | 1.2.1 | **Configuración de gestión ágil en JIRA** | 2d | 2025-09-11 15:00 | 2025-09-15 13:00 |  | 0d |
| 13 |  | Refinamiento de épicas | 2h | 2025-09-11 15:00 | 2025-09-11 17:00 | 10 | 0d |
| 14 |  | Crear historias de usuario | 1d | 2025-09-11 17:00 | 2025-09-12 17:00 | 13 | 0d |
| 15 |  | Estimar historias de usuario | 3h | 2025-09-12 17:00 | 2025-09-15 10:00 | 14 | 0d |
| 16 |  | Planificar sprints | 2h | 2025-09-15 10:00 | 2025-09-15 12:00 | 15 | 0d |
| 17 |  | Asignar versiones | 1h | 2025-09-15 12:00 | 2025-09-15 13:00 | 16 | 0d |
| 18 |  | Redactar backlog del sprint | 1d | 2025-09-15 15:00 | 2025-09-16 13:00 | 17 | 0d |
| 19 |  | Documentar Backlog detallado del producto | 2d | 2025-09-16 15:00 | 2025-09-18 13:00 | 18 | 0d |
| 20 |  | Elaborar cronograma de alto nivel | 1d | 2025-09-18 15:00 | 2025-09-19 13:00 | 19 | 0d |
| 21 |  | Crear cronograma detallado | 1d | 2025-09-19 15:00 | 2025-09-22 13:00 | 20 | 0d |
| 22 |  | Elaborar presupuesto del proyecto | 1d | 2025-09-22 15:00 | 2025-09-23 13:00 | 21 | 0d |
| 23 |  | Elaborar el registro de riesgos | 1d | 2025-09-23 15:00 | 2025-09-24 13:00 | 22 | 0d |
| 24 | 1.3 | **3.0 IMPLEMENTACION, REVISION Y RETROSPECTIVA** | 44d | 2025-09-24 15:00 | 2025-11-25 13:00 |  | 0d |
| 25 | 1.3.1 | **SPRINT 1** | 11d | 2025-09-24 15:00 | 2025-10-09 13:00 |  | 0d |
| 26 |  | Reunión de planeación del sprint | 1h | 2025-09-24 15:00 | 2025-09-24 16:00 | 23 | 0d |
| 27 |  | Crear el backlog del sprint | 3h | 2025-09-24 16:00 | 2025-09-24 19:00 | 26 | 0d |
| 28 | 1.3.1.3 | **Desarrollo** | 7.12d | 2025-09-25 09:00 | 2025-10-06 10:00 |  | 0d |
| 29 | 1.3.1.3.1 | **HU03: Registro y autenticación** | 3.12d | 2025-09-25 09:00 | 2025-09-30 10:00 |  | 0d |
| 30 |  | Crear modelo de usuarios en MongoDB | 5h | 2025-09-25 09:00 | 2025-09-25 16:00 | 27 | 0d |
| 31 |  | Configurar encriptación de contraseñas con bcrypt | 2h | 2025-09-25 16:00 | 2025-09-25 18:00 | 30 | 0d |
| 32 |  | Implementar backend de autenticación con JWT | 8h | 2025-09-25 18:00 | 2025-09-26 18:00 | 31 | 0d |
| 33 |  | Desarrollar formulario de registro y login en React | 8h | 2025-09-26 18:00 | 2025-09-29 18:00 | 32 | 0d |
| 34 |  | Ejecutar pruebas unitarias y funcionales | 2h | 2025-09-29 18:00 | 2025-09-30 10:00 | 33 | 0d |
| 35 | 1.3.1.3.2 | **HU04: Gestión de roles** | 2d | 2025-09-30 10:00 | 2025-10-02 10:00 |  | 0d |
| 36 |  | Implementar middleware de autorización por roles | 6h | 2025-09-30 10:00 | 2025-09-30 18:00 | 34 | 0d |
| 37 |  | Implementar interfaz de gestión de roles en React | 8h | 2025-09-30 18:00 | 2025-10-01 18:00 | 36 | 0d |
| 38 |  | Pruebas | 2h | 2025-10-01 18:00 | 2025-10-02 10:00 | 37 | 0d |
| 39 | 1.3.1.3.3 | **HU05: Panel de seguimiento docente** | 1d | 2025-10-02 10:00 | 2025-10-03 10:00 |  | 0d |
| 40 |  | Diseñar lógica de cálculo de progreso académico | 2h | 2025-10-02 10:00 | 2025-10-02 12:00 | 38 | 0d |
| 41 |  | Implementar vista de progreso del estudiante | 5h | 2025-10-02 12:00 | 2025-10-02 19:00 | 40 | 0d |
| 42 |  | Pruebas | 1h | 2025-10-03 09:00 | 2025-10-03 10:00 | 41 | 0d |
| 43 | 1.3.1.3.4 | **HU14: Diseño responsive** | 0.5d | 2025-10-03 10:00 | 2025-10-03 16:00 |  | 0d |
| 44 |  | Implementar diseño responsive con React | 3h | 2025-10-03 10:00 | 2025-10-03 13:00 | 42 | 0d |
| 45 |  | Ejecutar pruebas simuladas en responsively.app | 1h | 2025-10-03 15:00 | 2025-10-03 16:00 | 44 | 0d |
| 46 | 1.3.1.3.5 | **HU15: Accesibilidad para discapacidad visual** | 0.5d | 2025-10-03 16:00 | 2025-10-06 10:00 |  | 0d |
| 47 |  | Integrar widget de accesibilidad con UserWay | 3h | 2025-10-03 16:00 | 2025-10-03 19:00 | 45 | 0d |
| 48 |  | Validar funcionamiento del widget | 1h | 2025-10-06 09:00 | 2025-10-06 10:00 | 47 | 0d |
| 49 | 1.3.1.4 | **Pruebas generales** | 2d | 2025-10-06 10:00 | 2025-10-08 10:00 |  | 0d |
| 50 |  | Pruebas de Regresión | 4h | 2025-10-06 10:00 | 2025-10-06 16:00 | 48 | 0d |
| 51 |  | Pruebas de Aceptación de Usuario (UAT) | 4h | 2025-10-06 16:00 | 2025-10-07 10:00 | 50 | 0d |
| 52 |  | Pruebas de Desempeño + Seguridad | 8h | 2025-10-07 10:00 | 2025-10-08 10:00 | 51 | 0d |
| 53 |  | Reunión de demostración y revisión del sprint | 2h | 2025-10-08 10:00 | 2025-10-08 12:00 | 52 | 0d |
| 54 |  | Reunión de retrospectiva del sprint | 1h | 2025-10-08 12:00 | 2025-10-08 13:00 | 53 | 0d |
| 55 | 1.3.1.7 | **Documentación del sprint** | 1d | 2025-10-08 15:00 | 2025-10-09 13:00 |  | 0d |
| 56 |  | Informe de estado del proyecto | 4h | 2025-10-08 15:00 | 2025-10-08 19:00 | 54 | 0d |
| 57 |  | Minuta de reunión | 2h | 2025-10-09 09:00 | 2025-10-09 11:00 | 56 | 0d |
| 58 |  | Registro de impedimentos | 2h | 2025-10-09 11:00 | 2025-10-09 13:00 | 57 | 0d |
| 59 | 1.3.2 | **SPRINT 2** | 10.5d | 2025-10-09 15:00 | 2025-10-23 19:00 |  | 0d |
| 60 |  | Reunión de planeación del sprint | 1h | 2025-10-09 15:00 | 2025-10-09 16:00 | 58 | 0d |
| 61 |  | Crear el backlog del sprint | 2h | 2025-10-09 16:00 | 2025-10-09 18:00 | 60 | 0d |
| 62 | 1.3.2.3 | **Desarrollo** | 6.75d | 2025-10-09 18:00 | 2025-10-20 16:00 |  | 0d |
| 63 | 1.3.2.3.1 | **HU01: Subida de documentos PDF** | 1d | 2025-10-09 18:00 | 2025-10-10 18:00 |  | 0d |
| 64 |  | Implementar interfaz de carga de PDF | 2h | 2025-10-09 18:00 | 2025-10-10 10:00 | 61 | 0d |
| 65 |  | Almacenar archivos PDF en mongo DB | 5h | 2025-10-10 10:00 | 2025-10-10 17:00 | 64 | 0d |
| 66 |  | Ejecutar pruebas funcionales de carga | 1h | 2025-10-10 17:00 | 2025-10-10 18:00 | 65 | 0d |
| 67 | 1.3.2.3.2 | **HU02: Análisis de coherencia con IA** | 3.5d | 2025-10-10 18:00 | 2025-10-16 12:00 |  | 0d |
| 68 |  | Integrar modelo IA en backend para análisis de coherencia textual | 2d | 2025-10-10 18:00 | 2025-10-14 18:00 | 66 | 0d |
| 69 |  | Desarrollar endpoint REST para enviar texto y recibir evaluación | 4h | 2025-10-14 18:00 | 2025-10-15 12:00 | 68 | 0d |
| 70 |  | Procesar respuesta del modelo y estructurar para visualización | 2h | 2025-10-15 12:00 | 2025-10-15 16:00 | 69 | 0d |

| ID | WBS | Task | Duration | Start | Finish | Predecessors | Total float |
| --- | --- | --- | --- | --- | --- | --- | --- |
| 71 |  | Mostrar resultado del análisis en la interfaz | 5h | 2025-10-15 16:00 | 2025-10-16 11:00 | 70 | 0d |
| 72 |  | Ejecutar pruebas funcionales del flujo | 1h | 2025-10-16 11:00 | 2025-10-16 12:00 | 71 | 0d |
| 73 | 1.3.2.3.3 | **HU11: Verificación de citación APA/IEEE** | 2.25d | 2025-10-16 12:00 | 2025-10-20 16:00 |  | 0d |
| 74 |  | Implementar lógica de detección y validación de citaciones APA/IEEE | 4h | 2025-10-16 12:00 | 2025-10-16 18:00 | 72 | 0d |
| 75 |  | Integrar lógica de verificación con procesamiento del texto | 1d | 2025-10-16 18:00 | 2025-10-17 18:00 | 74 | 0d |
| 76 |  | Mostrar resultados del análisis de citación en la interfaz | 4h | 2025-10-17 18:00 | 2025-10-20 12:00 | 75 | 0d |
| 77 |  | Ejecutar pruebas con ejemplos correctos e incorrectos | 2h | 2025-10-20 12:00 | 2025-10-20 16:00 | 76 | 0d |
| 78 | 1.3.2.4 | **Pruebas generales** | 2d | 2025-10-20 16:00 | 2025-10-22 16:00 |  | 0d |
| 79 |  | Pruebas de Regresión | 4h | 2025-10-20 16:00 | 2025-10-21 10:00 | 77 | 0d |
| 80 |  | Pruebas de Aceptación de Usuario (UAT) | 4h | 2025-10-21 10:00 | 2025-10-21 16:00 | 79 | 0d |
| 81 |  | Pruebas de Desempeño + Seguridad | 8h | 2025-10-21 16:00 | 2025-10-22 16:00 | 80 | 0d |
| 82 |  | Reunión de demostración y revisión del sprint | 2h | 2025-10-22 16:00 | 2025-10-22 18:00 | 81 | 0d |
| 83 |  | Reunión de retrospectiva del sprint | 1h | 2025-10-22 18:00 | 2025-10-22 19:00 | 82 | 0d |
| 84 | 1.3.2.7 | **Documentación del sprint** | 1d | 2025-10-23 09:00 | 2025-10-23 19:00 |  | 0d |
| 85 |  | Informe de estado del proyecto | 4h | 2025-10-23 09:00 | 2025-10-23 13:00 | 83 | 0d |
| 86 |  | Minuta de reunión | 2h | 2025-10-23 15:00 | 2025-10-23 17:00 | 85 | 0d |
| 87 |  | Registro de impedimentos | 2h | 2025-10-23 17:00 | 2025-10-23 19:00 | 86 | 0d |
| 88 | 1.3.3 | **SPRINT 3** | 7.25d | 2025-10-24 09:00 | 2025-11-04 11:00 |  | 0d |
| 89 |  | Reunión de planeación del sprint | 1h | 2025-10-24 09:00 | 2025-10-24 10:00 | 87 | 0d |
| 90 |  | Crear el backlog del sprint | 2h | 2025-10-24 10:00 | 2025-10-24 12:00 | 89 | 0d |
| 91 | 1.3.3.3 | **Desarrollo** | 3.5d | 2025-10-24 12:00 | 2025-10-29 18:00 |  | 0d |
| 92 | 1.3.3.3.1 | **HU12: Detección básica de similitud** | 2.5d | 2025-10-24 12:00 | 2025-10-28 18:00 |  | 0d |
| 93 |  | Generar embeddings del texto con modelo local | 1d | 2025-10-24 12:00 | 2025-10-27 12:00 | 90 | 0d |
| 94 |  | Calcular porcentaje de similitud entre textos | 2h | 2025-10-27 12:00 | 2025-10-27 16:00 | 93 | 0d |
| 95 |  | Exponer endpoint de análisis de similitud en el backend | 3h | 2025-10-27 16:00 | 2025-10-27 19:00 | 94 | 0d |
| 96 |  | Mostrar porcentaje de similitud en frontend | 4h | 2025-10-28 09:00 | 2025-10-28 13:00 | 95 | 0d |
| 97 |  | Ejecutar pruebas con pares de textos variados | 3h | 2025-10-28 15:00 | 2025-10-28 18:00 | 96 | 0d |
| 98 | 1.3.3.3.2 | **HU06: Notificaciones en la aplicación web** | 1d | 2025-10-28 18:00 | 2025-10-29 18:00 |  | 0d |
| 99 |  | Diseñar arquitectura de notificaciones | 2h | 2025-10-28 18:00 | 2025-10-29 10:00 | 97 | 0d |
| 100 |  | Implementar backend para enviar notificaciones | 3h | 2025-10-29 10:00 | 2025-10-29 13:00 | 99 | 0d |
| 101 |  | Desarrollar icono de visualización en frontend | 1h | 2025-10-29 15:00 | 2025-10-29 16:00 | 100 | 0d |
| 102 |  | Configurar centro de notificaciones | 1h | 2025-10-29 16:00 | 2025-10-29 17:00 | 101 | 0d |
| 103 |  | Realizar prueba funcional de envío de notificacion | 1h | 2025-10-29 17:00 | 2025-10-29 18:00 | 102 | 0d |
| 104 | 1.3.3.4 | **Pruebas generales** | 2d | 2025-10-29 18:00 | 2025-10-31 18:00 |  | 0d |
| 105 |  | Pruebas de Regresión | 4h | 2025-10-29 18:00 | 2025-10-30 12:00 | 103 | 0d |
| 106 |  | Pruebas de Aceptación de Usuario (UAT) | 4h | 2025-10-30 12:00 | 2025-10-30 18:00 | 105 | 0d |
| 107 |  | Pruebas de Desempeño + Seguridad | 8h | 2025-10-30 18:00 | 2025-10-31 18:00 | 106 | 0d |
| 108 |  | Reunión de demostración y revisión del sprint | 2h | 2025-10-31 18:00 | 2025-11-03 10:00 | 107 | 0d |
| 109 |  | Reunión de retrospectiva del sprint | 1h | 2025-11-03 10:00 | 2025-11-03 11:00 | 108 | 0d |
| 110 | 1.3.3.7 | **Documentación del sprint** | 1d | 2025-11-03 11:00 | 2025-11-04 11:00 |  | 0d |
| 111 |  | Informe de estado del proyecto | 4h | 2025-11-03 11:00 | 2025-11-03 17:00 | 109 | 0d |
| 112 |  | Minuta de reunión | 2h | 2025-11-03 17:00 | 2025-11-03 19:00 | 111 | 0d |
| 113 |  | Registro de impedimentos | 2h | 2025-11-04 09:00 | 2025-11-04 11:00 | 112 | 0d |
| 114 | 1.3.4 | **SPRINT 4** | 7.75d | 2025-11-04 11:00 | 2025-11-13 19:00 |  | 0d |
| 115 |  | Reunión de planeación del sprint | 1h | 2025-11-04 11:00 | 2025-11-04 12:00 | 113 | 0d |
| 116 |  | Crear el backlog del sprint | 2h | 2025-11-04 12:00 | 2025-11-04 16:00 | 115 | 0d |
| 117 | 1.3.4.3 | **Desarrollo** | 4d | 2025-11-04 16:00 | 2025-11-10 16:00 |  | 0d |
| 118 | 1.3.4.3.1 | **HU07: Notificaciones por correo** | 1.5d | 2025-11-04 16:00 | 2025-11-06 10:00 |  | 0d |
| 119 |  | Configurar envío de correos con Nodemailer | 4h | 2025-11-04 16:00 | 2025-11-05 10:00 | 116 | 0d |
| 120 |  | Diseñar plantillas de correo HTML por eventos | 3h | 2025-11-05 10:00 | 2025-11-05 13:00 | 119 | 0d |
| 121 |  | Implementar lógica de disparo del correo por evento | 2h | 2025-11-05 15:00 | 2025-11-05 17:00 | 120 | 0d |
| 122 |  | Ejecutar pruebas de envío y recepción | 3h | 2025-11-05 17:00 | 2025-11-06 10:00 | 121 | 0d |
| 123 | 1.3.4.3.2 | **HU08: Automatización del flujo de revisión** | 2.5d | 2025-11-06 10:00 | 2025-11-10 16:00 |  | 0d |
| 124 |  | Diseñar el flujo automático completo en n8n | 5h | 2025-11-06 10:00 | 2025-11-06 17:00 | 122 | 0d |
| 125 |  | Integrar análisis IA en el flujo | 8h | 2025-11-06 17:00 | 2025-11-07 17:00 | 124 | 0d |
| 126 |  | Generar reporte automático del análisis | 4h | 2025-11-07 17:00 | 2025-11-10 11:00 | 125 | 0d |
| 127 |  | Enviar notificación del resultado | 1h | 2025-11-10 11:00 | 2025-11-10 12:00 | 126 | 0d |
| 128 |  | Ejecutar pruebas de extremo a extremo del flujo | 2h | 2025-11-10 12:00 | 2025-11-10 16:00 | 127 | 0d |
| 129 | 1.3.4.4 | **Pruebas generales** | 2d | 2025-11-10 16:00 | 2025-11-12 16:00 |  | 0d |
| 130 |  | Pruebas de Regresión | 4h | 2025-11-10 16:00 | 2025-11-11 10:00 | 128 | 0d |
| 131 |  | Pruebas de Aceptación de Usuario (UAT) | 4h | 2025-11-11 10:00 | 2025-11-11 16:00 | 130 | 0d |
| 132 |  | Pruebas de Desempeño + Seguridad | 8h | 2025-11-11 16:00 | 2025-11-12 16:00 | 131 | 0d |
| 133 |  | Reunión de demostración y revisión del sprint | 2h | 2025-11-12 16:00 | 2025-11-12 18:00 | 132 | 0d |
| 134 |  | Reunión de retrospectiva del sprint | 1h | 2025-11-12 18:00 | 2025-11-12 19:00 | 133 | 0d |
| 135 | 1.3.4.7 | **Documentación del sprint** | 1d | 2025-11-13 09:00 | 2025-11-13 19:00 |  | 0d |
| 136 |  | Informe de estado del proyecto | 4h | 2025-11-13 09:00 | 2025-11-13 13:00 | 134 | 0d |
| 137 |  | Minuta de reunión | 2h | 2025-11-13 15:00 | 2025-11-13 17:00 | 136 | 0d |
| 138 |  | Registro de impedimentos | 2h | 2025-11-13 17:00 | 2025-11-13 19:00 | 137 | 0d |
| 139 | 1.3.5 | **SPRINT 5** | 7.5d | 2025-11-14 09:00 | 2025-11-25 13:00 |  | 0d |
| 140 |  | Reunión de planeación del sprint | 1h | 2025-11-14 09:00 | 2025-11-14 10:00 | 138 | 0d |

| ID | WBS | Task | Duration | Start | Finish | Predecessors | Total float |
| --- | --- | --- | --- | --- | --- | --- | --- |
| 141 |  | Crear el backlog del sprint | 2h | 2025-11-14 10:00 | 2025-11-14 12:00 | 140 | 0d |
| 142 | 1.3.5.3 | **Desarrollo** | 3.5d | 2025-11-14 12:00 | 2025-11-19 18:00 |  | 0d |
| 143 | 1.3.5.3.1 | **HU09: Panel de métricas administrativas** | 1d | 2025-11-14 12:00 | 2025-11-17 12:00 |  | 0d |
| 144 |  | Definir métricas clave | 1h | 2025-11-14 12:00 | 2025-11-14 13:00 | 141 | 0d |
| 145 |  | Implementar endpoints de métricas en backend | 2h | 2025-11-14 15:00 | 2025-11-14 17:00 | 144 | 0d |
| 146 |  | Diseñar e implementar panel visual | 4h | 2025-11-14 17:00 | 2025-11-17 11:00 | 145 | 0d |
| 147 |  | Ejecutar pruebas de consistencia de datos | 1h | 2025-11-17 11:00 | 2025-11-17 12:00 | 146 | 0d |
| 148 | 1.3.5.3.2 | **HU10: Panel de estadísticas de errores** | 1.5d | 2025-11-17 12:00 | 2025-11-18 18:00 |  | 0d |
| 149 |  | Definir categorías y tipos de errores | 1h | 2025-11-17 12:00 | 2025-11-17 13:00 | 147 | 0d |
| 150 |  | Registrar errores detectados en mongoDB | 3h | 2025-11-17 15:00 | 2025-11-17 18:00 | 149 | 0d |
| 151 |  | Crear consultas en backend de estadística de errores | 2h | 2025-11-17 18:00 | 2025-11-18 10:00 | 150 | 0d |
| 152 |  | Implementar visualización en React | 4h | 2025-11-18 10:00 | 2025-11-18 16:00 | 151 | 0d |
| 153 |  | Pruebas con datos reales para verificar precisión | 2h | 2025-11-18 16:00 | 2025-11-18 18:00 | 152 | 0d |
| 154 | 1.3.5.3.3 | **HU13: Extractor de palabras clave académicas** | 1d | 2025-11-18 18:00 | 2025-11-19 18:00 |  | 0d |
| 155 |  | Implementar lógica para extraer palabras clave en backend | 3h | 2025-11-18 18:00 | 2025-11-19 11:00 | 153 | 0d |
| 156 |  | Diseñar vista en React para mostrar palabras clave | 4h | 2025-11-19 11:00 | 2025-11-19 17:00 | 155 | 0d |
| 157 |  | Ejecutar pruebas con textos reales | 1h | 2025-11-19 17:00 | 2025-11-19 18:00 | 156 | 0d |
| 158 | 1.3.5.4 | **Pruebas generales** | 2d | 2025-11-19 18:00 | 2025-11-21 18:00 |  | 0d |
| 159 |  | Pruebas de Regresión | 4h | 2025-11-19 18:00 | 2025-11-20 12:00 | 157 | 0d |
| 160 |  | Pruebas de Aceptación de Usuario (UAT) | 4h | 2025-11-20 12:00 | 2025-11-20 18:00 | 159 | 0d |
| 161 |  | Pruebas de Desempeño + Seguridad | 8h | 2025-11-20 18:00 | 2025-11-21 18:00 | 160 | 0d |
| 162 |  | Reunión de demostración y revisión del sprint | 2h | 2025-11-21 18:00 | 2025-11-24 10:00 | 161 | 0d |
| 163 |  | Reunión de retrospectiva del sprint | 1h | 2025-11-24 10:00 | 2025-11-24 11:00 | 162 | 0d |
| 164 | 1.3.5.7 | **Documentación del sprint** | 1.25d | 2025-11-24 11:00 | 2025-11-25 13:00 |  | 0d |
| 165 |  | Informe de estado del proyecto | 4h | 2025-11-24 11:00 | 2025-11-24 17:00 | 163 | 0d |
| 166 |  | Minuta de reunión | 4h | 2025-11-24 17:00 | 2025-11-25 11:00 | 165 | 0d |
| 167 |  | Registro de impedimentos | 2h | 2025-11-25 11:00 | 2025-11-25 13:00 | 166 | 0d |
| 168 | 1.4 | **4.0 LANZAMIENTO** | 2.5d | 2025-11-25 15:00 | 2025-11-27 19:00 |  | 0d |
| 169 |  | Enviar entregables | 1d | 2025-11-25 15:00 | 2025-11-26 13:00 | 167 | 0d |
| 170 |  | Puesta en Producción | 1d | 2025-11-26 15:00 | 2025-11-27 13:00 | 169 | 0d |
| 171 |  | Reunión de Retrospectiva de Proyecto | 4h | 2025-11-27 15:00 | 2025-11-27 19:00 | 170 | 0d |
| 172 | 1.5 | **5.0 CIERRE** | 2.5d | 2025-11-28 09:00 | 2025-12-02 13:00 |  | 0d |
| 173 |  | Cierre financiero del proyecto | 4h | 2025-11-28 09:00 | 2025-11-28 13:00 | 171 | 0d |
| 174 |  | Liberar y evaluar recursos | 8h | 2025-11-28 15:00 | 2025-12-01 13:00 | 173 | 0d |
| 175 |  | Crear Acta de Cierre de Proyecto | 8h | 2025-12-01 15:00 | 2025-12-02 13:00 | 174 | 0d |

## Version 2 (saved 2025-10-03)

Note of the change: Merge de Develop a Main (#8)

Last finish 2025-12-02 → 2025-11-25 (-7d).

Changed:

| ID | Task | Start | Finish | Duration |
| --- | --- | --- | --- | --- |
| 1 | **REVISOR AUTOMÁTICO DE ESCRITURA ACADÉMICA** |  | 2025-12-02 13:00 → 2025-11-25 13:00 (-7d) | 61.5d → 56.5d |
| 6 | Crear acta de constitución |  |  | 1d → 8h |
| 11 | **2.0 PLANIFICACION Y ESTIMACION** |  | 2025-09-24 13:00 → 2025-09-17 13:00 (-7d) | 9d → 4d |
| 12 | **Configuración de gestión ágil en JIRA** |  | 2025-09-15 13:00 → 2025-09-12 19:00 (-3d) | 2d → 1.5d |
| 14 | Crear historias de usuario |  | 2025-09-12 17:00 → 2025-09-12 13:00 | 1d → 6h |
| 15 | Estimar historias de usuario | 2025-09-12 17:00 → 2025-09-12 15:00 | 2025-09-15 10:00 → 2025-09-12 17:00 (-3d) | 3h → 2h |
| 16 | Planificar sprints | 2025-09-15 10:00 → 2025-09-12 17:00 (-3d) | 2025-09-15 12:00 → 2025-09-12 18:00 (-3d) | 2h → 1h |
| 17 | Asignar versiones | 2025-09-15 12:00 → 2025-09-12 18:00 (-3d) | 2025-09-15 13:00 → 2025-09-12 19:00 (-3d) |  |
| 18 | Redactar backlog del sprint | 2025-09-15 15:00 → 2025-09-15 09:00 | 2025-09-16 13:00 → 2025-09-15 11:00 (-1d) | 1d → 2h |
| 19 | Documentar Backlog detallado del producto | 2025-09-16 15:00 → 2025-09-15 11:00 (-1d) | 2025-09-18 13:00 → 2025-09-15 17:00 (-3d) | 2d → 4h |
| 20 | Elaborar cronograma de alto nivel | 2025-09-18 15:00 → 2025-09-15 17:00 (-3d) | 2025-09-19 13:00 → 2025-09-15 18:00 (-4d) | 1d → 1h |
| 21 | Crear cronograma detallado | 2025-09-19 15:00 → 2025-09-15 18:00 (-4d) | 2025-09-22 13:00 → 2025-09-16 13:00 (-6d) | 1d → 5h |
| 22 | Elaborar presupuesto del proyecto | 2025-09-22 15:00 → 2025-09-16 15:00 (-6d) | 2025-09-23 13:00 → 2025-09-16 19:00 (-7d) | 1d → 4h |
| 23 | Elaborar el registro de riesgos | 2025-09-23 15:00 → 2025-09-17 09:00 (-6d) | 2025-09-24 13:00 → 2025-09-17 13:00 (-7d) | 1d → 4h |
| 24 | **3.0 IMPLEMENTACION, REVISION Y RETROSPECTIVA** | 2025-09-24 15:00 → 2025-09-17 15:00 (-7d) | 2025-11-25 13:00 → 2025-11-18 13:00 (-7d) |  |
| 25 | **SPRINT 1** | 2025-09-24 15:00 → 2025-09-17 15:00 (-7d) | 2025-10-09 13:00 → 2025-10-02 13:00 (-7d) |  |
| 26 | Reunión de planeación del sprint | 2025-09-24 15:00 → 2025-09-17 15:00 (-7d) | 2025-09-24 16:00 → 2025-09-17 16:00 (-7d) |  |
| 27 | Crear el backlog del sprint | 2025-09-24 16:00 → 2025-09-17 16:00 (-7d) | 2025-09-24 19:00 → 2025-09-17 19:00 (-7d) |  |
| 28 | **Desarrollo** | 2025-09-25 09:00 → 2025-09-18 09:00 (-7d) | 2025-10-06 10:00 → 2025-09-29 10:00 (-7d) |  |
| 29 | **HU03: Registro y autenticación** | 2025-09-25 09:00 → 2025-09-18 09:00 (-7d) | 2025-09-30 10:00 → 2025-09-23 10:00 (-7d) |  |
| 30 | Crear modelo de usuarios en MongoDB | 2025-09-25 09:00 → 2025-09-18 09:00 (-7d) | 2025-09-25 16:00 → 2025-09-18 16:00 (-7d) |  |
| 31 | Configurar encriptación de contraseñas con bcrypt | 2025-09-25 16:00 → 2025-09-18 16:00 (-7d) | 2025-09-25 18:00 → 2025-09-18 18:00 (-7d) |  |
| 32 | Implementar backend de autenticación con JWT | 2025-09-25 18:00 → 2025-09-18 18:00 (-7d) | 2025-09-26 18:00 → 2025-09-19 18:00 (-7d) |  |
| 33 | Desarrollar formulario de registro y login en React | 2025-09-26 18:00 → 2025-09-19 18:00 (-7d) | 2025-09-29 18:00 → 2025-09-22 18:00 (-7d) |  |
| 34 | Ejecutar pruebas unitarias y funcionales | 2025-09-29 18:00 → 2025-09-22 18:00 (-7d) | 2025-09-30 10:00 → 2025-09-23 10:00 (-7d) |  |
| 35 | **HU04: Gestión de roles** | 2025-09-30 10:00 → 2025-09-23 10:00 (-7d) | 2025-10-02 10:00 → 2025-09-25 10:00 (-7d) |  |
| 36 | Implementar middleware de autorización por roles | 2025-09-30 10:00 → 2025-09-23 10:00 (-7d) | 2025-09-30 18:00 → 2025-09-23 18:00 (-7d) |  |
| 37 | Implementar interfaz de gestión de roles en React | 2025-09-30 18:00 → 2025-09-23 18:00 (-7d) | 2025-10-01 18:00 → 2025-09-24 18:00 (-7d) |  |
| 38 | Pruebas | 2025-10-01 18:00 → 2025-09-24 18:00 (-7d) | 2025-10-02 10:00 → 2025-09-25 10:00 (-7d) |  |
| 39 | **HU05: Panel de seguimiento docente** | 2025-10-02 10:00 → 2025-09-25 10:00 (-7d) | 2025-10-03 10:00 → 2025-09-26 10:00 (-7d) |  |
| 40 | Diseñar lógica de cálculo de progreso académico | 2025-10-02 10:00 → 2025-09-25 10:00 (-7d) | 2025-10-02 12:00 → 2025-09-25 12:00 (-7d) |  |
| 41 | Implementar vista de progreso del estudiante | 2025-10-02 12:00 → 2025-09-25 12:00 (-7d) | 2025-10-02 19:00 → 2025-09-25 19:00 (-7d) |  |
| 42 | Pruebas | 2025-10-03 09:00 → 2025-09-26 09:00 (-7d) | 2025-10-03 10:00 → 2025-09-26 10:00 (-7d) |  |
| 43 | **HU14: Diseño responsive** | 2025-10-03 10:00 → 2025-09-26 10:00 (-7d) | 2025-10-03 16:00 → 2025-09-26 16:00 (-7d) |  |
| 44 | Implementar diseño responsive con React | 2025-10-03 10:00 → 2025-09-26 10:00 (-7d) | 2025-10-03 13:00 → 2025-09-26 13:00 (-7d) |  |
| 45 | Ejecutar pruebas simuladas en responsively.app | 2025-10-03 15:00 → 2025-09-26 15:00 (-7d) | 2025-10-03 16:00 → 2025-09-26 16:00 (-7d) |  |
| 46 | **HU15: Accesibilidad para discapacidad visual** | 2025-10-03 16:00 → 2025-09-26 16:00 (-7d) | 2025-10-06 10:00 → 2025-09-29 10:00 (-7d) |  |
| 47 | Integrar widget de accesibilidad con UserWay | 2025-10-03 16:00 → 2025-09-26 16:00 (-7d) | 2025-10-03 19:00 → 2025-09-26 19:00 (-7d) |  |
| 48 | Validar funcionamiento del widget | 2025-10-06 09:00 → 2025-09-29 09:00 (-7d) | 2025-10-06 10:00 → 2025-09-29 10:00 (-7d) |  |
| 49 | **Pruebas generales** | 2025-10-06 10:00 → 2025-09-29 10:00 (-7d) | 2025-10-08 10:00 → 2025-10-01 10:00 (-7d) |  |
| 50 | Pruebas de Regresión | 2025-10-06 10:00 → 2025-09-29 10:00 (-7d) | 2025-10-06 16:00 → 2025-09-29 16:00 (-7d) |  |
| 51 | Pruebas de Aceptación de Usuario (UAT) | 2025-10-06 16:00 → 2025-09-29 16:00 (-7d) | 2025-10-07 10:00 → 2025-09-30 10:00 (-7d) |  |
| 52 | Pruebas de Desempeño + Seguridad | 2025-10-07 10:00 → 2025-09-30 10:00 (-7d) | 2025-10-08 10:00 → 2025-10-01 10:00 (-7d) |  |
| 53 | Reunión de demostración y revisión del sprint | 2025-10-08 10:00 → 2025-10-01 10:00 (-7d) | 2025-10-08 12:00 → 2025-10-01 12:00 (-7d) |  |
| 54 | Reunión de retrospectiva del sprint | 2025-10-08 12:00 → 2025-10-01 12:00 (-7d) | 2025-10-08 13:00 → 2025-10-01 13:00 (-7d) |  |
| 55 | **Documentación del sprint** | 2025-10-08 15:00 → 2025-10-01 15:00 (-7d) | 2025-10-09 13:00 → 2025-10-02 13:00 (-7d) |  |
| 56 | Informe de estado del proyecto | 2025-10-08 15:00 → 2025-10-01 15:00 (-7d) | 2025-10-08 19:00 → 2025-10-01 19:00 (-7d) |  |
| 57 | Minuta de reunión | 2025-10-09 09:00 → 2025-10-02 09:00 (-7d) | 2025-10-09 11:00 → 2025-10-02 11:00 (-7d) |  |
| 58 | Registro de impedimentos | 2025-10-09 11:00 → 2025-10-02 11:00 (-7d) | 2025-10-09 13:00 → 2025-10-02 13:00 (-7d) |  |
| 59 | **SPRINT 2** | 2025-10-09 15:00 → 2025-10-02 15:00 (-7d) | 2025-10-23 19:00 → 2025-10-16 19:00 (-7d) |  |
| 60 | Reunión de planeación del sprint | 2025-10-09 15:00 → 2025-10-02 15:00 (-7d) | 2025-10-09 16:00 → 2025-10-02 16:00 (-7d) |  |
| 61 | Crear el backlog del sprint | 2025-10-09 16:00 → 2025-10-02 16:00 (-7d) | 2025-10-09 18:00 → 2025-10-02 18:00 (-7d) |  |
| 62 | **Desarrollo** | 2025-10-09 18:00 → 2025-10-02 18:00 (-7d) | 2025-10-20 16:00 → 2025-10-13 16:00 (-7d) |  |
| 63 | **HU01: Subida de documentos PDF** | 2025-10-09 18:00 → 2025-10-02 18:00 (-7d) | 2025-10-10 18:00 → 2025-10-03 18:00 (-7d) |  |
| 64 | Implementar interfaz de carga de PDF | 2025-10-09 18:00 → 2025-10-02 18:00 (-7d) | 2025-10-10 10:00 → 2025-10-03 10:00 (-7d) |  |
| 65 | Almacenar archivos PDF en mongo DB | 2025-10-10 10:00 → 2025-10-03 10:00 (-7d) | 2025-10-10 17:00 → 2025-10-03 17:00 (-7d) |  |
| 66 | Ejecutar pruebas funcionales de carga | 2025-10-10 17:00 → 2025-10-03 17:00 (-7d) | 2025-10-10 18:00 → 2025-10-03 18:00 (-7d) |  |
| 67 | **HU02: Análisis de coherencia con IA** | 2025-10-10 18:00 → 2025-10-03 18:00 (-7d) | 2025-10-16 12:00 → 2025-10-09 12:00 (-7d) |  |
| 68 | Integrar modelo IA en backend para análisis de coherencia textual | 2025-10-10 18:00 → 2025-10-03 18:00 (-7d) | 2025-10-14 18:00 → 2025-10-07 18:00 (-7d) |  |
| 69 | Desarrollar endpoint REST para enviar texto y recibir evaluación | 2025-10-14 18:00 → 2025-10-07 18:00 (-7d) | 2025-10-15 12:00 → 2025-10-08 12:00 (-7d) |  |
| 70 | Procesar respuesta del modelo y estructurar para visualización | 2025-10-15 12:00 → 2025-10-08 12:00 (-7d) | 2025-10-15 16:00 → 2025-10-08 16:00 (-7d) |  |
| 71 | Mostrar resultado del análisis en la interfaz | 2025-10-15 16:00 → 2025-10-08 16:00 (-7d) | 2025-10-16 11:00 → 2025-10-09 11:00 (-7d) |  |
| 72 | Ejecutar pruebas funcionales del flujo | 2025-10-16 11:00 → 2025-10-09 11:00 (-7d) | 2025-10-16 12:00 → 2025-10-09 12:00 (-7d) |  |
| 73 | **HU11: Verificación de citación APA/IEEE** | 2025-10-16 12:00 → 2025-10-09 12:00 (-7d) | 2025-10-20 16:00 → 2025-10-13 16:00 (-7d) |  |
| 74 | Implementar lógica de detección y validación de citaciones APA/IEEE | 2025-10-16 12:00 → 2025-10-09 12:00 (-7d) | 2025-10-16 18:00 → 2025-10-09 18:00 (-7d) |  |
| 75 | Integrar lógica de verificación con procesamiento del texto | 2025-10-16 18:00 → 2025-10-09 18:00 (-7d) | 2025-10-17 18:00 → 2025-10-10 18:00 (-7d) |  |
| 76 | Mostrar resultados del análisis de citación en la interfaz | 2025-10-17 18:00 → 2025-10-10 18:00 (-7d) | 2025-10-20 12:00 → 2025-10-13 12:00 (-7d) |  |
| 77 | Ejecutar pruebas con ejemplos correctos e incorrectos | 2025-10-20 12:00 → 2025-10-13 12:00 (-7d) | 2025-10-20 16:00 → 2025-10-13 16:00 (-7d) |  |
| 78 | **Pruebas generales** | 2025-10-20 16:00 → 2025-10-13 16:00 (-7d) | 2025-10-22 16:00 → 2025-10-15 16:00 (-7d) |  |
| 79 | Pruebas de Regresión | 2025-10-20 16:00 → 2025-10-13 16:00 (-7d) | 2025-10-21 10:00 → 2025-10-14 10:00 (-7d) |  |

| ID | Task | Start | Finish |
| --- | --- | --- | --- |
| 80 | Pruebas de Aceptación de Usuario (UAT) | 2025-10-21 10:00 → 2025-10-14 10:00 (-7d) | 2025-10-21 16:00 → 2025-10-14 16:00 (-7d) |
| 81 | Pruebas de Desempeño + Seguridad | 2025-10-21 16:00 → 2025-10-14 16:00 (-7d) | 2025-10-22 16:00 → 2025-10-15 16:00 (-7d) |
| 82 | Reunión de demostración y revisión del sprint | 2025-10-22 16:00 → 2025-10-15 16:00 (-7d) | 2025-10-22 18:00 → 2025-10-15 18:00 (-7d) |
| 83 | Reunión de retrospectiva del sprint | 2025-10-22 18:00 → 2025-10-15 18:00 (-7d) | 2025-10-22 19:00 → 2025-10-15 19:00 (-7d) |
| 84 | **Documentación del sprint** | 2025-10-23 09:00 → 2025-10-16 09:00 (-7d) | 2025-10-23 19:00 → 2025-10-16 19:00 (-7d) |
| 85 | Informe de estado del proyecto | 2025-10-23 09:00 → 2025-10-16 09:00 (-7d) | 2025-10-23 13:00 → 2025-10-16 13:00 (-7d) |
| 86 | Minuta de reunión | 2025-10-23 15:00 → 2025-10-16 15:00 (-7d) | 2025-10-23 17:00 → 2025-10-16 17:00 (-7d) |
| 87 | Registro de impedimentos | 2025-10-23 17:00 → 2025-10-16 17:00 (-7d) | 2025-10-23 19:00 → 2025-10-16 19:00 (-7d) |
| 88 | **SPRINT 3** | 2025-10-24 09:00 → 2025-10-17 09:00 (-7d) | 2025-11-04 11:00 → 2025-10-28 11:00 (-7d) |
| 89 | Reunión de planeación del sprint | 2025-10-24 09:00 → 2025-10-17 09:00 (-7d) | 2025-10-24 10:00 → 2025-10-17 10:00 (-7d) |
| 90 | Crear el backlog del sprint | 2025-10-24 10:00 → 2025-10-17 10:00 (-7d) | 2025-10-24 12:00 → 2025-10-17 12:00 (-7d) |
| 91 | **Desarrollo** | 2025-10-24 12:00 → 2025-10-17 12:00 (-7d) | 2025-10-29 18:00 → 2025-10-22 18:00 (-7d) |
| 92 | **HU12: Detección básica de similitud** | 2025-10-24 12:00 → 2025-10-17 12:00 (-7d) | 2025-10-28 18:00 → 2025-10-21 18:00 (-7d) |
| 93 | Generar embeddings del texto con modelo local | 2025-10-24 12:00 → 2025-10-17 12:00 (-7d) | 2025-10-27 12:00 → 2025-10-20 12:00 (-7d) |
| 94 | Calcular porcentaje de similitud entre textos | 2025-10-27 12:00 → 2025-10-20 12:00 (-7d) | 2025-10-27 16:00 → 2025-10-20 16:00 (-7d) |
| 95 | Exponer endpoint de análisis de similitud en el backend | 2025-10-27 16:00 → 2025-10-20 16:00 (-7d) | 2025-10-27 19:00 → 2025-10-20 19:00 (-7d) |
| 96 | Mostrar porcentaje de similitud en frontend | 2025-10-28 09:00 → 2025-10-21 09:00 (-7d) | 2025-10-28 13:00 → 2025-10-21 13:00 (-7d) |
| 97 | Ejecutar pruebas con pares de textos variados | 2025-10-28 15:00 → 2025-10-21 15:00 (-7d) | 2025-10-28 18:00 → 2025-10-21 18:00 (-7d) |
| 98 | **HU06: Notificaciones en la aplicación web** | 2025-10-28 18:00 → 2025-10-21 18:00 (-7d) | 2025-10-29 18:00 → 2025-10-22 18:00 (-7d) |
| 99 | Diseñar arquitectura de notificaciones | 2025-10-28 18:00 → 2025-10-21 18:00 (-7d) | 2025-10-29 10:00 → 2025-10-22 10:00 (-7d) |
| 100 | Implementar backend para enviar notificaciones | 2025-10-29 10:00 → 2025-10-22 10:00 (-7d) | 2025-10-29 13:00 → 2025-10-22 13:00 (-7d) |
| 101 | Desarrollar icono de visualización en frontend | 2025-10-29 15:00 → 2025-10-22 15:00 (-7d) | 2025-10-29 16:00 → 2025-10-22 16:00 (-7d) |
| 102 | Configurar centro de notificaciones | 2025-10-29 16:00 → 2025-10-22 16:00 (-7d) | 2025-10-29 17:00 → 2025-10-22 17:00 (-7d) |
| 103 | Realizar prueba funcional de envío de notificacion | 2025-10-29 17:00 → 2025-10-22 17:00 (-7d) | 2025-10-29 18:00 → 2025-10-22 18:00 (-7d) |
| 104 | **Pruebas generales** | 2025-10-29 18:00 → 2025-10-22 18:00 (-7d) | 2025-10-31 18:00 → 2025-10-24 18:00 (-7d) |
| 105 | Pruebas de Regresión | 2025-10-29 18:00 → 2025-10-22 18:00 (-7d) | 2025-10-30 12:00 → 2025-10-23 12:00 (-7d) |
| 106 | Pruebas de Aceptación de Usuario (UAT) | 2025-10-30 12:00 → 2025-10-23 12:00 (-7d) | 2025-10-30 18:00 → 2025-10-23 18:00 (-7d) |
| 107 | Pruebas de Desempeño + Seguridad | 2025-10-30 18:00 → 2025-10-23 18:00 (-7d) | 2025-10-31 18:00 → 2025-10-24 18:00 (-7d) |
| 108 | Reunión de demostración y revisión del sprint | 2025-10-31 18:00 → 2025-10-24 18:00 (-7d) | 2025-11-03 10:00 → 2025-10-27 10:00 (-7d) |
| 109 | Reunión de retrospectiva del sprint | 2025-11-03 10:00 → 2025-10-27 10:00 (-7d) | 2025-11-03 11:00 → 2025-10-27 11:00 (-7d) |
| 110 | **Documentación del sprint** | 2025-11-03 11:00 → 2025-10-27 11:00 (-7d) | 2025-11-04 11:00 → 2025-10-28 11:00 (-7d) |
| 111 | Informe de estado del proyecto | 2025-11-03 11:00 → 2025-10-27 11:00 (-7d) | 2025-11-03 17:00 → 2025-10-27 17:00 (-7d) |
| 112 | Minuta de reunión | 2025-11-03 17:00 → 2025-10-27 17:00 (-7d) | 2025-11-03 19:00 → 2025-10-27 19:00 (-7d) |
| 113 | Registro de impedimentos | 2025-11-04 09:00 → 2025-10-28 09:00 (-7d) | 2025-11-04 11:00 → 2025-10-28 11:00 (-7d) |
| 114 | **SPRINT 4** | 2025-11-04 11:00 → 2025-10-28 11:00 (-7d) | 2025-11-13 19:00 → 2025-11-06 19:00 (-7d) |
| 115 | Reunión de planeación del sprint | 2025-11-04 11:00 → 2025-10-28 11:00 (-7d) | 2025-11-04 12:00 → 2025-10-28 12:00 (-7d) |
| 116 | Crear el backlog del sprint | 2025-11-04 12:00 → 2025-10-28 12:00 (-7d) | 2025-11-04 16:00 → 2025-10-28 16:00 (-7d) |
| 117 | **Desarrollo** | 2025-11-04 16:00 → 2025-10-28 16:00 (-7d) | 2025-11-10 16:00 → 2025-11-03 16:00 (-7d) |
| 118 | **HU07: Notificaciones por correo** | 2025-11-04 16:00 → 2025-10-28 16:00 (-7d) | 2025-11-06 10:00 → 2025-10-30 10:00 (-7d) |
| 119 | Configurar envío de correos con Nodemailer | 2025-11-04 16:00 → 2025-10-28 16:00 (-7d) | 2025-11-05 10:00 → 2025-10-29 10:00 (-7d) |
| 120 | Diseñar plantillas de correo HTML por eventos | 2025-11-05 10:00 → 2025-10-29 10:00 (-7d) | 2025-11-05 13:00 → 2025-10-29 13:00 (-7d) |
| 121 | Implementar lógica de disparo del correo por evento | 2025-11-05 15:00 → 2025-10-29 15:00 (-7d) | 2025-11-05 17:00 → 2025-10-29 17:00 (-7d) |
| 122 | Ejecutar pruebas de envío y recepción | 2025-11-05 17:00 → 2025-10-29 17:00 (-7d) | 2025-11-06 10:00 → 2025-10-30 10:00 (-7d) |
| 123 | **HU08: Automatización del flujo de revisión** | 2025-11-06 10:00 → 2025-10-30 10:00 (-7d) | 2025-11-10 16:00 → 2025-11-03 16:00 (-7d) |
| 124 | Diseñar el flujo automático completo en n8n | 2025-11-06 10:00 → 2025-10-30 10:00 (-7d) | 2025-11-06 17:00 → 2025-10-30 17:00 (-7d) |
| 125 | Integrar análisis IA en el flujo | 2025-11-06 17:00 → 2025-10-30 17:00 (-7d) | 2025-11-07 17:00 → 2025-10-31 17:00 (-7d) |
| 126 | Generar reporte automático del análisis | 2025-11-07 17:00 → 2025-10-31 17:00 (-7d) | 2025-11-10 11:00 → 2025-11-03 11:00 (-7d) |
| 127 | Enviar notificación del resultado | 2025-11-10 11:00 → 2025-11-03 11:00 (-7d) | 2025-11-10 12:00 → 2025-11-03 12:00 (-7d) |
| 128 | Ejecutar pruebas de extremo a extremo del flujo | 2025-11-10 12:00 → 2025-11-03 12:00 (-7d) | 2025-11-10 16:00 → 2025-11-03 16:00 (-7d) |
| 129 | **Pruebas generales** | 2025-11-10 16:00 → 2025-11-03 16:00 (-7d) | 2025-11-12 16:00 → 2025-11-05 16:00 (-7d) |
| 130 | Pruebas de Regresión | 2025-11-10 16:00 → 2025-11-03 16:00 (-7d) | 2025-11-11 10:00 → 2025-11-04 10:00 (-7d) |
| 131 | Pruebas de Aceptación de Usuario (UAT) | 2025-11-11 10:00 → 2025-11-04 10:00 (-7d) | 2025-11-11 16:00 → 2025-11-04 16:00 (-7d) |
| 132 | Pruebas de Desempeño + Seguridad | 2025-11-11 16:00 → 2025-11-04 16:00 (-7d) | 2025-11-12 16:00 → 2025-11-05 16:00 (-7d) |
| 133 | Reunión de demostración y revisión del sprint | 2025-11-12 16:00 → 2025-11-05 16:00 (-7d) | 2025-11-12 18:00 → 2025-11-05 18:00 (-7d) |
| 134 | Reunión de retrospectiva del sprint | 2025-11-12 18:00 → 2025-11-05 18:00 (-7d) | 2025-11-12 19:00 → 2025-11-05 19:00 (-7d) |
| 135 | **Documentación del sprint** | 2025-11-13 09:00 → 2025-11-06 09:00 (-7d) | 2025-11-13 19:00 → 2025-11-06 19:00 (-7d) |
| 136 | Informe de estado del proyecto | 2025-11-13 09:00 → 2025-11-06 09:00 (-7d) | 2025-11-13 13:00 → 2025-11-06 13:00 (-7d) |
| 137 | Minuta de reunión | 2025-11-13 15:00 → 2025-11-06 15:00 (-7d) | 2025-11-13 17:00 → 2025-11-06 17:00 (-7d) |
| 138 | Registro de impedimentos | 2025-11-13 17:00 → 2025-11-06 17:00 (-7d) | 2025-11-13 19:00 → 2025-11-06 19:00 (-7d) |
| 139 | **SPRINT 5** | 2025-11-14 09:00 → 2025-11-07 09:00 (-7d) | 2025-11-25 13:00 → 2025-11-18 13:00 (-7d) |
| 140 | Reunión de planeación del sprint | 2025-11-14 09:00 → 2025-11-07 09:00 (-7d) | 2025-11-14 10:00 → 2025-11-07 10:00 (-7d) |
| 141 | Crear el backlog del sprint | 2025-11-14 10:00 → 2025-11-07 10:00 (-7d) | 2025-11-14 12:00 → 2025-11-07 12:00 (-7d) |
| 142 | **Desarrollo** | 2025-11-14 12:00 → 2025-11-07 12:00 (-7d) | 2025-11-19 18:00 → 2025-11-12 18:00 (-7d) |
| 143 | **HU09: Panel de métricas administrativas** | 2025-11-14 12:00 → 2025-11-07 12:00 (-7d) | 2025-11-17 12:00 → 2025-11-10 12:00 (-7d) |
| 144 | Definir métricas clave | 2025-11-14 12:00 → 2025-11-07 12:00 (-7d) | 2025-11-14 13:00 → 2025-11-07 13:00 (-7d) |
| 145 | Implementar endpoints de métricas en backend | 2025-11-14 15:00 → 2025-11-07 15:00 (-7d) | 2025-11-14 17:00 → 2025-11-07 17:00 (-7d) |
| 146 | Diseñar e implementar panel visual | 2025-11-14 17:00 → 2025-11-07 17:00 (-7d) | 2025-11-17 11:00 → 2025-11-10 11:00 (-7d) |
| 147 | Ejecutar pruebas de consistencia de datos | 2025-11-17 11:00 → 2025-11-10 11:00 (-7d) | 2025-11-17 12:00 → 2025-11-10 12:00 (-7d) |
| 148 | **HU10: Panel de estadísticas de errores** | 2025-11-17 12:00 → 2025-11-10 12:00 (-7d) | 2025-11-18 18:00 → 2025-11-11 18:00 (-7d) |
| 149 | Definir categorías y tipos de errores | 2025-11-17 12:00 → 2025-11-10 12:00 (-7d) | 2025-11-17 13:00 → 2025-11-10 13:00 (-7d) |

| ID | Task | Start | Finish |
| --- | --- | --- | --- |
| 150 | Registrar errores detectados en mongoDB | 2025-11-17 15:00 → 2025-11-10 15:00 (-7d) | 2025-11-17 18:00 → 2025-11-10 18:00 (-7d) |
| 151 | Crear consultas en backend de estadística de errores | 2025-11-17 18:00 → 2025-11-10 18:00 (-7d) | 2025-11-18 10:00 → 2025-11-11 10:00 (-7d) |
| 152 | Implementar visualización en React | 2025-11-18 10:00 → 2025-11-11 10:00 (-7d) | 2025-11-18 16:00 → 2025-11-11 16:00 (-7d) |
| 153 | Pruebas con datos reales para verificar precisión | 2025-11-18 16:00 → 2025-11-11 16:00 (-7d) | 2025-11-18 18:00 → 2025-11-11 18:00 (-7d) |
| 154 | **HU13: Extractor de palabras clave académicas** | 2025-11-18 18:00 → 2025-11-11 18:00 (-7d) | 2025-11-19 18:00 → 2025-11-12 18:00 (-7d) |
| 155 | Implementar lógica para extraer palabras clave en backend | 2025-11-18 18:00 → 2025-11-11 18:00 (-7d) | 2025-11-19 11:00 → 2025-11-12 11:00 (-7d) |
| 156 | Diseñar vista en React para mostrar palabras clave | 2025-11-19 11:00 → 2025-11-12 11:00 (-7d) | 2025-11-19 17:00 → 2025-11-12 17:00 (-7d) |
| 157 | Ejecutar pruebas con textos reales | 2025-11-19 17:00 → 2025-11-12 17:00 (-7d) | 2025-11-19 18:00 → 2025-11-12 18:00 (-7d) |
| 158 | **Pruebas generales** | 2025-11-19 18:00 → 2025-11-12 18:00 (-7d) | 2025-11-21 18:00 → 2025-11-14 18:00 (-7d) |
| 159 | Pruebas de Regresión | 2025-11-19 18:00 → 2025-11-12 18:00 (-7d) | 2025-11-20 12:00 → 2025-11-13 12:00 (-7d) |
| 160 | Pruebas de Aceptación de Usuario (UAT) | 2025-11-20 12:00 → 2025-11-13 12:00 (-7d) | 2025-11-20 18:00 → 2025-11-13 18:00 (-7d) |
| 161 | Pruebas de Desempeño + Seguridad | 2025-11-20 18:00 → 2025-11-13 18:00 (-7d) | 2025-11-21 18:00 → 2025-11-14 18:00 (-7d) |
| 162 | Reunión de demostración y revisión del sprint | 2025-11-21 18:00 → 2025-11-14 18:00 (-7d) | 2025-11-24 10:00 → 2025-11-17 10:00 (-7d) |
| 163 | Reunión de retrospectiva del sprint | 2025-11-24 10:00 → 2025-11-17 10:00 (-7d) | 2025-11-24 11:00 → 2025-11-17 11:00 (-7d) |
| 164 | **Documentación del sprint** | 2025-11-24 11:00 → 2025-11-17 11:00 (-7d) | 2025-11-25 13:00 → 2025-11-18 13:00 (-7d) |
| 165 | Informe de estado del proyecto | 2025-11-24 11:00 → 2025-11-17 11:00 (-7d) | 2025-11-24 17:00 → 2025-11-17 17:00 (-7d) |
| 166 | Minuta de reunión | 2025-11-24 17:00 → 2025-11-17 17:00 (-7d) | 2025-11-25 11:00 → 2025-11-18 11:00 (-7d) |
| 167 | Registro de impedimentos | 2025-11-25 11:00 → 2025-11-18 11:00 (-7d) | 2025-11-25 13:00 → 2025-11-18 13:00 (-7d) |
| 168 | **4.0 LANZAMIENTO** | 2025-11-25 15:00 → 2025-11-18 15:00 (-7d) | 2025-11-27 19:00 → 2025-11-20 19:00 (-7d) |
| 169 | Enviar entregables | 2025-11-25 15:00 → 2025-11-18 15:00 (-7d) | 2025-11-26 13:00 → 2025-11-19 13:00 (-7d) |
| 170 | Puesta en Producción | 2025-11-26 15:00 → 2025-11-19 15:00 (-7d) | 2025-11-27 13:00 → 2025-11-20 13:00 (-7d) |
| 171 | Reunión de Retrospectiva de Proyecto | 2025-11-27 15:00 → 2025-11-20 15:00 (-7d) | 2025-11-27 19:00 → 2025-11-20 19:00 (-7d) |
| 172 | **5.0 CIERRE** | 2025-11-28 09:00 → 2025-11-21 09:00 (-7d) | 2025-12-02 13:00 → 2025-11-25 13:00 (-7d) |
| 173 | Cierre financiero del proyecto | 2025-11-28 09:00 → 2025-11-21 09:00 (-7d) | 2025-11-28 13:00 → 2025-11-21 13:00 (-7d) |
| 174 | Liberar y evaluar recursos | 2025-11-28 15:00 → 2025-11-21 15:00 (-7d) | 2025-12-01 13:00 → 2025-11-24 13:00 (-7d) |
| 175 | Crear Acta de Cierre de Proyecto | 2025-12-01 15:00 → 2025-11-24 15:00 (-7d) | 2025-12-02 13:00 → 2025-11-25 13:00 (-7d) |
